# NAJD-S2

Schedule from Primavera P6, 2025-09-07 to 2026-09-09, data date 2025-08-15, costs in SAR, A marks actual dates.
Must finish by 2026-09-09

## Calendars

- NAJD Site — Sun-Thu 8h (KSA): Mon-Thu 07:00-15:00; Fri-Sat off; Sun 07:00-15:00. Exceptions (off unless hours are given): 2025-09-23, 2026-03-18 07:00-11:00, 2026-03-19, 2026-03-22 to 2026-03-23.
- NAJD Office — Sun-Thu 8h: Mon-Thu 08:00-16:00; Fri-Sat off; Sun 08:00-16:00.

## Resources

| Resource | Group |
| --- | --- |
| Earthworks Crew | labor |
| 30t Excavator Fleet | equipment |
| Pipe 48in CS API 5L | material |
| QA/QC Engineers | labor |
| Sideboom Spread | equipment |
| Welding & NDT Crew | labor |
| HDD Maxi Rig | equipment |

## Schedule

| ID | Activity | Type | Duration | Start | Finish | Predecessors | Complete | Remaining | Planned start | Planned finish | Total float | Constraint | Calendar | Resources | Cost | Actual cost |
| --- | --- | --- | --- | --- | --- | --- | --- | --- | --- | --- | --- | --- | --- | --- | --- | --- |
| A-000 | Notice to Proceed | milestone | 0d | 2025-09-07 A | 2025-09-07 A |  | 100% |  |  |  |  |  |  |  |  |  |
| A-010 | Mobilization & Temporary Works |  | 0d | 2025-09-07 A | 2025-10-05 A | A-000 | 100% |  |  |  |  |  |  | Earthworks Crew [160 h] | 1,500,000 | 1,650,000 |
| A-020 | Site Facilities & Access Roads |  | 0d | 2025-10-06 A | 2025-11-16 A | A-010 | 100% |  |  |  |  |  |  | 30t Excavator Fleet [240 h] | 1,200,000 | 1,260,000 |
| M-100 | Section 2 Mechanical Completion | milestone | 0d | 2026-09-08 | 2026-09-08 | T-030, C-030 |  |  |  |  | -5d | mandatory finish 2026-09-01 |  |  |  |  |
| M-110 | Handover to Operations | milestone | 0d | 2026-09-08 | 2026-09-08 | M-100 FS+10d |  |  |  |  | -5d |  |  |  |  |  |
| P-010 | Pipe Mill Order & Manufacture |  | 0d | 2025-09-07 A | 2026-02-08 A | A-000 | 100% |  |  |  |  |  | NAJD Office — Sun-Thu 8h | Pipe 48in CS API 5L | 2,000,000 | 2,040,000 |
| P-020 | Pipe Delivery Lot 1 — Segments A and B |  | 0d | 2026-01-12 A | 2026-02-01 A | P-010 FF+10d | 100% |  |  |  |  |  | NAJD Office — Sun-Thu 8h | Pipe 48in CS API 5L | 800,000 | 800,000 |
| P-030 | Pipe Delivery Lot 2 — Segments C and D |  | 0d | 2026-06-18 A | 2026-05-27 | P-010 | 60% | 6d | 2026-05-07 | 2026-05-27 | 20d |  | NAJD Office — Sun-Thu 8h | Pipe 48in CS API 5L | 800,000 | 496,000 |
| P-040 | Valves & Fittings Procurement |  | 0d | 2026-06-18 | 2026-07-15 | P-010 |  |  |  |  | 60d |  | NAJD Office — Sun-Thu 8h | QA/QC Engineers | 600,000 |  |
| S31-010 | Survey & Set-out KP512+000 to KP518+000 |  | 0d | 2025-10-06 A | 2025-10-12 A | A-020 | 100% |  |  |  |  |  |  | QA/QC Engineers [40 h] | 120,000 | 129,600 |
| S31-020 | ROW Clearing & Grading KP512+000 to KP518+000 |  | 0d | 2025-10-13 A | 2025-10-28 A | S31-010 | 100% |  |  |  |  |  |  | Earthworks Crew [96 h]; 30t Excavator Fleet [96 h] | 450,000 | 486,000 |
| S31-030 | Trench Excavation KP512+000 to KP518+000 |  | 0d | 2025-10-29 A | 2025-12-02 A | S31-020 | 100% |  |  |  |  |  |  | Earthworks Crew [200 h]; 30t Excavator Fleet [200 h] | 1,400,000 | 1,512,000 |
| S31-040 | Pipe Stringing KP512+000 to KP518+000 |  | 0d | 2025-11-05 A | 2025-11-18 A | S31-030 SS+5d, P-020 | 100% |  |  |  |  |  |  | Sideboom Spread [80 h]; Pipe 48in CS API 5L [6000] | 3,800,000 | 4,104,000 |
| S31-050 | Welding & NDT KP512+000 to KP518+000 |  | 0d | 2025-11-19 A | 2025-12-30 A | S31-040 | 100% |  |  |  |  |  |  | Welding & NDT Crew [240 h] | 1,800,000 | 1,944,000 |
| S31-060 | Lower-in & Backfill KP512+000 to KP518+000 |  | 0d | 2025-12-31 A | 2026-01-25 A | S31-050 | 100% |  |  |  |  |  |  | Sideboom Spread [144 h]; Earthworks Crew [144 h] | 900,000 | 972,000 |
| S31-070 | Reinstatement KP512+000 to KP518+000 |  | 0d | 2026-01-26 A | 2026-02-08 A | S31-060 | 100% |  |  |  |  |  |  | Earthworks Crew [80 h] | 400,000 | 432,000 |
| S32-010 | Survey & Set-out KP518+000 to KP524+000 |  | 0d | 2025-12-08 A | 2025-12-14 A | S31-020 | 100% |  |  |  |  |  |  | QA/QC Engineers [40 h] | 120,000 | 134,400 |
| S32-020 | ROW Clearing & Grading KP518+000 to KP524+000 |  | 0d | 2025-12-15 A | 2025-12-30 A | S32-010 | 100% |  |  |  |  |  |  | Earthworks Crew [96 h]; 30t Excavator Fleet [96 h] | 450,000 | 504,000 |
| S32-030 | Trench Excavation KP518+000 to KP524+000 |  | 0d | 2025-12-31 A | 2026-02-03 A | S32-020 | 100% |  |  |  |  |  |  | Earthworks Crew [200 h]; 30t Excavator Fleet [200 h] | 1,400,000 | 1,568,000 |
| S32-040 | Pipe Stringing KP518+000 to KP524+000 |  | 0d | 2026-01-07 A | 2026-01-20 A | S32-030 SS+5d | 100% |  |  |  |  |  |  | Sideboom Spread [80 h]; Pipe 48in CS API 5L [6000] | 3,800,000 | 4,256,000 |
| S32-050 | Welding & NDT KP518+000 to KP524+000 |  | 0d | 2026-01-21 A | 2026-03-03 A | S32-040 | 100% |  |  |  |  |  |  | Welding & NDT Crew [240 h] | 1,800,000 | 2,016,000 |
| S32-060 | Lower-in & Backfill KP518+000 to KP524+000 |  | 0d | 2026-03-04 A | 2026-04-01 A | S32-050 | 100% |  |  |  |  |  |  | Sideboom Spread [144 h]; Earthworks Crew [144 h] | 900,000 | 1,008,000 |
| S32-070 | Reinstatement KP518+000 to KP524+000 |  | 0d | 2026-04-02 A | 2026-04-15 A | S32-060 | 100% |  |  |  |  |  |  | Earthworks Crew [80 h] | 400,000 | 448,000 |
| S33-010 | Survey & Set-out KP524+000 to KP530+000 |  | 0d | 2026-02-09 A | 2026-02-15 A | S32-020 | 100% |  |  |  |  |  |  | QA/QC Engineers [40 h] | 120,000 | 130,800 |
| S33-020 | ROW Clearing & Grading KP524+000 to KP530+000 |  | 0d | 2026-02-16 A | 2026-03-03 A | S33-010 | 100% |  |  |  |  |  |  | Earthworks Crew [96 h]; 30t Excavator Fleet [96 h] | 450,000 | 490,500 |
| S33-030 | Trench Excavation KP524+000 to KP530+000 |  | 0d | 2026-03-04 A | 2026-04-12 A | S33-020 | 100% |  |  |  |  |  |  | Earthworks Crew [200 h]; 30t Excavator Fleet [200 h] | 1,400,000 | 1,526,000 |
| S33-040 | Pipe Stringing KP524+000 to KP530+000 |  | 0d | 2026-03-11 A | 2026-03-29 A | S33-030 SS+5d | 100% |  |  |  |  |  |  | Sideboom Spread [80 h]; Pipe 48in CS API 5L [6000] | 3,800,000 | 4,142,000 |
| S33-050 | Welding & NDT KP524+000 to KP530+000 |  | 0d | 2026-04-09 A | 2026-05-10 | S33-040 | 55% | 15d | 2026-03-30 | 2026-05-10 | 0d |  |  | Welding & NDT Crew [240 h] | 1,800,000 | 1,025,145 |
| S33-060 | Lower-in & Backfill KP524+000 to KP530+000 |  | 0d | 2026-05-11 | 2026-06-03 | S33-050 |  |  |  |  | 0d |  |  | Sideboom Spread [144 h]; Earthworks Crew [144 h] | 900,000 |  |
| S33-070 | Reinstatement KP524+000 to KP530+000 |  | 0d | 2026-06-04 | 2026-06-17 | S33-060 |  |  |  |  | 5d |  |  | Earthworks Crew [80 h] | 400,000 |  |
| S34-010 | Survey & Set-out KP530+000 to KP536+000 |  | 0d | 2026-04-16 A | 2026-04-22 A | S33-020 | 100% |  |  |  |  |  |  | QA/QC Engineers [40 h] | 120,000 | 127,200 |
| S34-020 | ROW Clearing & Grading KP530+000 to KP536+000 |  | 0d | 2026-05-07 A | 2026-05-10 | S34-010 | 30% | 10d | 2026-04-23 | 2026-05-10 | -5d |  |  | Earthworks Crew [96 h]; 30t Excavator Fleet [96 h] | 450,000 | 135,945 |
| S34-030 | Trench Excavation KP530+000 to KP536+000 |  | 0d | 2026-05-11 | 2026-06-14 | S34-020 |  |  |  |  | -5d |  |  | Earthworks Crew [200 h]; 30t Excavator Fleet [200 h] | 1,400,000 |  |
| S34-040 | Pipe Stringing KP530+000 to KP536+000 |  | 0d | 2026-05-18 | 2026-05-31 | S34-030 SS+5d, P-030 |  |  |  |  | -5d |  |  | Sideboom Spread [80 h]; Pipe 48in CS API 5L [6000] | 3,800,000 |  |
| S34-050 | Welding & NDT KP530+000 to KP536+000 |  | 0d | 2026-06-01 | 2026-08-03 | S34-040 |  |  |  |  | -5d |  |  | Welding & NDT Crew [368 h] | 1,800,000 |  |
| S34-060 | Lower-in & Backfill KP530+000 to KP536+000 |  | 0d | 2026-07-13 | 2026-08-05 | S34-050 |  |  |  |  | -5d |  |  | Sideboom Spread [144 h]; Earthworks Crew [144 h] | 900,000 |  |
| S34-070 | Reinstatement KP530+000 to KP536+000 |  | 0d | 2026-08-06 | 2026-08-19 | S34-060 |  |  |  |  | -5d |  |  | Earthworks Crew [80 h] | 400,000 |  |
| C-010 | Wadi Hanifa HDD Crossing KP529+800 |  | 0d | 2026-04-13 A | 2026-05-13 | S33-030 FS-5d | 45% | 20d | 2026-03-26 | 2026-05-13 | 3d |  |  | HDD Maxi Rig [280 h] | 2,500,000 | 1,375,000 |
| C-020 | Pump Station 2 Tie-in KP536+000 |  | 0d | 2026-08-27 | 2026-09-09 | S34-070 |  |  |  |  | 5d | finish on 2026-09-02 |  | Welding & NDT Crew [80 h] | 700,000 |  |
| C-030 | Cathodic Protection System — Section 2 Mainline |  | 0d | 2026-08-06 | 2026-09-09 |  |  |  |  |  | 15d |  |  | QA/QC Engineers [200 h] | 900,000 |  |
| T-010 | Hydrostatic Test — Section 2 Mainline |  | 0d | 2026-07-30 | 2026-08-19 | S34-060, S33-070, S31-070, S32-070, C-010, P-040 |  |  |  |  | -5d |  |  | QA/QC Engineers [120 h] | 500,000 |  |
| T-020 | Golden Weld Tie-in KP518+400 |  | 0d | 2026-08-23 | 2026-08-27 | S33-050 |  |  |  |  | 10d |  |  | Welding & NDT Crew [40 h] | 300,000 |  |
| T-030 | Pre-commissioning & Dewatering |  | 0d | 2026-08-23 | 2026-09-07 | T-010, T-020 |  |  |  |  | -5d |  |  | QA/QC Engineers [96 h] | 400,000 |  |
